# gp C

Schedule from MS Project, 2020-08-13 to 2021-08-25, 6 hours a day, costs in ৳, A marks actual dates.

## Calendars

- Standard: Mon-Thu 08:00-12:00, 13:00-17:00; Fri-Sat off; Sun 08:00-12:00, 13:00-17:00. Exceptions (off unless hours are given): 2020-09-10 to 2020-09-16 (Mid Term Break), 2020-10-30 (Eid-E-Miladun-Nabi), 2020-12-14 (Arms Day), 2020-12-16 (Victory Day), 2020-12-18 to 2020-12-26 (End Term Break), 2021-01-01 (New Year), 2021-02-21 (International Mothers Language day).

## Resources

| Resource | Rate |
| --- | --- |
| Lt Ema |  |
| Lt Safkat |  |
| Lt Nahian |  |
| Lt Labiba |  |
| Lt Lopa |  |
| PC | 50000 |
| Barcode Scanner | 7000 |
| Arduino Uno | 500 |
| ESP32-CAM | 1000 |

## Schedule

| ID | WBS | Task | Type | Duration | Start | Finish | Predecessors | Complete | Remaining | Baseline 1 start | Baseline 1 finish | Total slack | Free slack | Constraint | Resources | Work | Actual work | Cost |
| --- | --- | --- | --- | --- | --- | --- | --- | --- | --- | --- | --- | --- | --- | --- | --- | --- | --- | --- |
| 1 | 1 | **Vehical Logbook Management System** |  | 342.33d | 2020-08-13 A | 2021-08-25 |  | 25% | 255.3d | 2020-08-13 | 2020-12-29 |  |  |  |  | 1778h | 564h | 408,500 |
| 2 | 1.1 | **Initialization** |  | 14d | 2020-08-13 A | 2020-08-27 |  | 93% | 1d | 2020-08-13 | 2020-08-27 | 328.33d |  |  |  | 276h | 246h |  |
| 3 | 1.1.1 | Project Planning |  | 2d | 2020-08-13 A | 2020-08-16 |  | 50% | 1d | 2020-08-13 | 2020-08-14 | 340.33d |  |  | Lt Ema; Lt Labiba; Lt Lopa; Lt Nahian; Lt Safkat | 60h | 30h |  |
| 4 | 1.1.2 | Project Proposal |  | 12d | 2020-08-14 A | 2020-08-27 A | 3 | 100% |  | 2020-08-14 | 2020-08-27 |  |  |  | Lt Safkat; Lt Labiba; Lt Lopa | 216h | 216h |  |
| 5 | 1.1.3 | Project Approval | milestone | 0d | 2020-08-27 A | 2020-08-27 A | 4 | 100% |  | 2020-08-27 | 2020-08-27 |  |  |  | Lt Nahian; Lt Safkat; Lt Lopa |  |  |  |
| 6 | 1.2 | **Plan** |  | 22d | 2020-08-27 A | 2020-09-27 A |  | 100% |  | 2020-08-27 | 2020-09-28 |  |  |  |  | 318h | 318h |  |
| 7 | 1.2.1 | **Macro Planning** |  | 5d | 2020-08-27 A | 2020-09-02 A |  | 100% |  | 2020-08-27 | 2020-09-02 |  |  |  |  | 90h | 90h |  |
| 8 | 1.2.1.1 | Overview of Project |  | 1d | 2020-08-27 A | 2020-08-30 A | 5 | 100% |  | 2020-08-27 | 2020-08-30 |  |  |  | Lt Ema; Lt Labiba; Lt Lopa; Lt Nahian; Lt Safkat | 30h | 30h |  |
| 9 | 1.2.1.2 | Overview of Software |  | 2d | 2020-08-30 A | 2020-08-31 A | 8 | 100% |  | 2020-08-30 | 2020-08-31 |  |  |  | Lt Nahian; Lt Safkat | 24h | 24h |  |
| 10 | 1.2.1.3 | Overview of Hardware |  | 2d | 2020-08-31 A | 2020-09-02 A | 9 | 100% |  | 2020-08-31 | 2020-09-02 |  |  |  | Lt Ema; Lt Labiba; Lt Lopa | 36h | 36h |  |
| 11 | 1.2.2 | **Details Planning** |  | 17d | 2020-09-02 A | 2020-09-27 A |  | 100% |  | 2020-09-02 | 2020-09-28 |  |  |  |  | 228h | 228h |  |
| 12 | 1.2.2.1 | Image Processing Mechanism |  | 2d | 2020-09-02 A | 2020-09-03 A | 10 | 100% |  | 2020-09-02 | 2020-09-03 |  |  |  | Lt Nahian | 12h | 12h |  |
| 13 | 1.2.2.2 | Database Management |  | 5d | 2020-09-03 A | 2020-09-09 A | 12 | 100% |  | 2020-09-03 | 2020-09-09 |  |  |  | Lt Labiba; Lt Safkat | 60h | 60h |  |
| 14 | 1.2.2.3 | Scanning Procedure |  | 2d | 2020-09-09 A | 2020-09-17 A | 13 | 100% |  | 2020-09-09 | 2020-09-20 |  |  |  | Lt Ema; Lt Lopa | 24h | 24h |  |
| 15 | 1.2.2.4 | **Unification** |  | 4d | 2020-09-20 A | 2020-09-22 A |  | 100% |  | 2020-09-20 | 2020-09-23 |  |  |  |  | 72h | 72h |  |
| 16 | 1.2.2.4.1 | Image Processing & Database |  | 2d | 2020-09-20 A | 2020-09-21 A | 14 | 100% |  | 2020-09-20 | 2020-09-22 |  |  |  | Lt Ema; Lt Lopa; Lt Nahian | 36h | 36h |  |
| 17 | 1.2.2.4.2 | Scanner & Database |  | 2d | 2020-09-21 A | 2020-09-22 A | 16 | 100% |  | 2020-09-22 | 2020-09-23 |  |  |  | Lt Labiba; Lt Nahian; Lt Safkat | 36h | 36h |  |
| 18 | 1.2.2.5 | Feedback Mechanism |  | 2d | 2020-09-23 A | 2020-09-24 A | 17 | 100% |  | 2020-09-23 | 2020-09-27 |  |  |  | Lt Nahian; Lt Safkat | 24h | 24h |  |
| 19 | 1.2.2.6 | Dual Authentication Check |  | 2d | 2020-09-24 A | 2020-09-27 A | 18 | 100% |  | 2020-09-27 | 2020-09-28 |  |  |  | Lt Ema; Lt Labiba; Lt Lopa | 36h | 36h |  |
| 20 | 1.3 | **Execution** |  | 233.75d | 2020-09-28 | 2021-06-10 |  |  |  | 2020-09-28 | 2020-12-28 | 72.58d |  |  |  | 1154h |  | 408,500 |
| 21 | 1.3.1 | Concept |  | 3.67d | 2020-09-28 | 2020-09-30 | 19 |  |  | 2020-09-28 | 2020-09-30 | 216.67d | 1d | finish no earlier than 2020-09-30 | Lt Labiba; Lt Lopa | 44h |  |  |
| 22 | 1.3.2 | Collecting Materials |  | 7d | 2020-10-01 | 2020-10-08 | 21 |  |  | 2020-10-01 | 2020-10-08 | 215.67d | 76.42d | finish no earlier than 2020-10-08 | Lt Safkat; Lt Nahian | 84h |  |  |
| 23 | 1.3.3 | **Designing** |  | 87.58d | 2021-01-07 | 2021-04-09 |  |  |  | 2020-10-08 | 2020-10-29 |  |  |  |  | 204h |  | 201,500 |
| 24 | 1.3.3.1 | **Software Designing** |  | 50.25d | 2021-01-07 | 2021-03-02 |  |  |  | 2020-10-08 | 2020-10-20 |  |  |  |  | 108h |  | 200,000 |
| 25 | 1.3.3.1.1 | Database Designing |  | 5d | 2021-01-07 | 2021-01-12 | 22 |  |  | 2020-10-08 | 2020-10-13 | 139.25d | 0d |  | Lt Ema; Lt Lopa; PC | 60h |  | 50,000 |
| 26 | 1.3.3.1.2 | Image Processing |  | 2d | 2021-01-12 | 2021-01-14 | 25 |  |  | 2020-10-14 | 2020-10-15 | 139.25d | 0d |  | Lt Nahian; PC | 12h |  | 50,000 |
| 27 | 1.3.3.1.3 | Dual Authentication Check Designing |  | 2d | 2021-01-14 | 2021-01-17 | 26 |  |  | 2020-10-15 | 2020-10-18 | 139.25d | 0d |  | Lt Labiba; Lt Safkat; PC | 24h |  | 50,000 |
| 28 | 1.3.3.1.4 | Feedback Mechanism Designing |  | 2d | 2021-01-17 | 2021-01-19 | 27 |  |  | 2020-10-19 | 2020-10-20 | 139.25d | 41d |  | Lt Nahian; PC | 12h |  | 50,000 |

| ID | WBS | Task | Type | Duration | Start | Finish | Predecessors | Baseline 1 start | Baseline 1 finish | Total slack | Free slack | Resources | Work | Cost |
| --- | --- | --- | --- | --- | --- | --- | --- | --- | --- | --- | --- | --- | --- | --- |
| 29 | 1.3.3.2 | **Hardware Designing** |  | 35.58d | 2021-03-04 | 2021-04-09 |  | 2020-10-20 | 2020-10-29 |  |  |  | 96h | 1,500 |
| 30 | 1.3.3.2.1 | Scanner Implementation |  | 3d | 2021-03-04 | 2021-03-08 | 28 | 2020-10-20 | 2020-10-22 | 98.25d | 0d | Lt Labiba; Lt Safkat; ESP32-CAM | 36h | 1,000 |
| 31 | 1.3.3.2.2 | Barcode Generating |  | 2d | 2021-03-08 | 2021-03-09 | 30 | 2020-10-22 | 2020-10-26 | 98.25d | 0d | Lt Ema; Lt Lopa | 24h |  |
| 32 | 1.3.3.2.3 | Vehicle Identifier |  | 3d | 2021-03-09 | 2021-03-14 | 31 | 2020-10-27 | 2020-10-29 | 98.25d | 26.67d | Lt Ema; Lt Nahian; Arduino Uno | 36h | 500 |
| 33 | 1.3.4 | **Development** |  | 43d | 2021-04-11 | 2021-05-25 |  | 2020-10-29 | 2020-12-13 |  |  |  | 474h | 157,000 |
| 34 | 1.3.4.1 | Transformation of Logbook to Databse |  | 14d | 2021-04-11 | 2021-04-25 | 32 | 2020-10-29 | 2020-11-12 | 71.58d | 0d | Lt Nahian; Lt Safkat; PC | 168h | 50,000 |
| 35 | 1.3.4.2 | Digitalization of Job Card |  | 5d | 2021-04-25 | 2021-04-29 | 34 | 2020-11-12 | 2020-11-18 | 71.58d | 0d | Lt Ema; Lt Labiba; Lt Lopa | 90h |  |
| 36 | 1.3.4.3 | Linking of Job Card with Logbook |  | 2d | 2021-04-29 | 2021-05-02 | 35 | 2020-11-18 | 2020-11-19 | 71.58d | 0d | Lt Lopa | 12h |  |
| 37 | 1.3.4.4 | Linking of Vehicle Identifier with Logbook |  | 3d | 2021-05-02 | 2021-05-05 | 36 | 2020-11-22 | 2020-11-24 | 71.58d | 0d | Lt Ema | 18h |  |
| 38 | 1.3.4.5 | Barcode Generator |  | 2d | 2021-05-05 | 2021-05-06 | 37 | 2020-11-24 | 2020-11-24 | 71.58d | 0d | Lt Labiba | 12h |  |
| 39 | 1.3.4.6 | Linking of Scanner with Job Card |  | 2d | 2021-05-06 | 2021-05-10 | 38 | 2020-11-25 | 2020-11-26 | 71.58d | 0d | Lt Nahian; Barcode Scanner | 12h | 7,000 |
| 40 | 1.3.4.7 | Authentication |  | 3d | 2021-05-10 | 2021-05-12 | 39 | 2020-11-26 | 2020-11-30 | 71.58d | 0d | Lt Safkat; PC | 18h | 50,000 |
| 41 | 1.3.4.8 | Feed Back Generate |  | 5d | 2021-05-12 | 2021-05-18 | 40 | 2020-11-30 | 2020-12-06 | 71.58d | 0d | Lt Nahian; Lt Safkat | 60h |  |
| 42 | 1.3.4.9 | Connecting with Server |  | 7d | 2021-05-18 | 2021-05-25 | 41 | 2020-12-06 | 2020-12-13 | 71.58d | 0d | Lt Lopa; Lt Nahian; PC | 84h | 50,000 |
| 43 | 1.3.5 | **Tests** |  | 12d | 2021-05-25 | 2021-06-07 |  | 2020-12-13 | 2020-12-28 | 71.58d |  |  | 348h | 50,000 |
| 44 | 1.3.5.1 | Analysis |  | 12d | 2021-05-25 | 2021-06-07 | 42 | 2020-12-13 | 2020-12-28 | 76.58d |  | PC; Lt Ema; Lt Labiba; Lt Safkat | 204h | 50,000 |
| 45 | 1.3.5.2 | Improvements |  | 12d | 2021-05-25 | 2021-06-07 | 42 | 2020-12-13 | 2020-12-28 | 71.58d | 0d | Lt Lopa; Lt Nahian | 144h |  |
| 46 | 1.3.6 | Final Check and preparation for Delivery |  | 4d | 2021-06-07 | 2021-06-10 | 45 |  |  | 71.58d | 0d |  |  |  |
| 47 | 1.3.7 | Delivery | milestone | 0d | 2021-06-10 | 2021-06-10 | 46 | 2020-12-28 | 2020-12-28 | 71.58d | 70.33d | Lt Ema |  |  |
| 48 | 1.4 | **Closing** |  | 2.25d | 2021-08-24 | 2021-08-25 |  | 2020-12-29 | 2020-12-29 |  |  |  | 30h |  |
| 49 | 1.4.1 | Closing Meeting |  | 1d | 2021-08-24 | 2021-08-24 | 47 | 2020-12-29 | 2020-12-29 | 1.25d |  | Lt Lopa; Lt Safkat; Lt Ema; Lt Labiba; Lt Nahian | 30h |  |
