# Water supply FINAL

Schedule from MS Project, 2019-02-03 to 2019-10-24, costs in ৳, A marks actual dates.

## Calendars

- Mist-1: Mon-Thu 08:00-14:40, 18:00-24:00; Fri-Sat off; Sun 08:00-14:40, 18:00-24:00. Exceptions (off unless hours are given): 2019-02-21 (21st Feb), 2019-03-17 (Birthday(Father or the Nation)), 2019-03-26 (Independence Day), 2019-04-04 (Shob-E-Meraj), 2019-04-14 (Bengali New Year), 2019-04-21 (Shob-E-Barat), 2019-05-01 (May Day), 2019-05-18 (Buddha Purnima), 2019-05-31 (Jumatul Bidha), 2019-06-02 (Shob-e-Qadr), 2019-06-04 to 2019-06-06 (Eid-ul-Fitr), 2019-08-11 to 2019-08-13 (Eid-ul-Azha), 2019-08-15 (Mourning Day), 2019-08-23 (Janmashtami), 2019-09-10 (Ashura), 2019-10-08 (Durga Puja), 2019-10-18 to 2019-10-19 08:00-12:00, 13:00-17:00, 2019-10-23 08:00-12:00, 13:00-17:00.

## Resources

| Resource | Group | Rate |
| --- | --- | --- |
| Water Supply Management | Project |  |
| Farahnaz Reza | PD ,SD | 180 |
| Zakir Hossain | SD,HD | 180 |
| Anika Tahsin Raisa | SD | 180 |
| Farhan Sadeed | HD | 5 |
| Raspberry Pi 3 |  | 3600 |
| Flow Sensor |  | 496 |
| Pressure Sensor |  | 1526 |
| Turbidity Sensor |  | 1056 |
| PH Sensor |  | 2625 |
| GPS Tracker |  | 1576 |

## Schedule

| ID | WBS | Task | Type | Duration | Start | Finish | Predecessors | Complete | Remaining | Baseline start | Baseline finish | Baseline duration | Total slack | Free slack | Constraint | Resources | Work | Actual work | Cost | Baseline cost | Actual cost |
| --- | --- | --- | --- | --- | --- | --- | --- | --- | --- | --- | --- | --- | --- | --- | --- | --- | --- | --- | --- | --- | --- |
| 1 | 1 | **Water Supply Management** |  | 274.58d | 2019-02-03 A | 2019-10-24 |  | 12% | 242.85d | 2019-02-03 | 2019-10-24 | 274.88d | 0d |  |  |  | 3220.67h | 592.83h | 522,320 | 669,000 | 106,710 |
| 2 | 1.1 | Group Selection |  | 1d | 2019-02-03 | 2019-02-03 |  |  |  | 2019-02-03 | 2019-02-03 | 1d | 273.58d |  |  |  |  |  |  |  |  |
| 3 | 1.2 | **Idea** |  | 24.88d | 2019-02-04 A | 2019-02-26 A |  | 100% |  | 2019-02-04 | 2019-02-26 | 24.88d |  |  |  |  | 456.33h | 456.33h | 82,140 | 102,146.67 | 82,140 |
| 4 | 1.2.1 | Idea Generation |  | 1.75w | 2019-02-04 A | 2019-02-11 A |  | 100% |  | 2019-02-04 | 2019-02-11 | 1.75w |  |  | finish no earlier than 2019-02-11 | Farahnaz Reza; Zakir Hossain; Anika Tahsin Raisa | 210h | 210h | 37,800 | 50,400 | 37,800 |
| 5 | 1.2.2 | Idea Presentation |  | 1d | 2019-02-11 A | 2019-02-12 A | 4 | 100% |  | 2019-02-11 | 2019-02-12 | 1.83d |  |  | start no earlier than 2019-02-11 | Farahnaz Reza | 8h | 8h | 1,440 | 2,880 | 1,440 |
| 6 | 1.2.3 | Idea Selection |  | 4.5d | 2019-02-12 A | 2019-02-17 A | 5 | 100% |  | 2019-02-12 | 2019-02-17 | 4.5d |  |  | start no earlier than 2019-02-11 | Zakir Hossain; Farahnaz Reza | 59.33h | 59.33h | 10,680 | 10,680 | 10,680 |
| 7 | 1.2.4 | Idea Approval |  | 10.62d | 2019-02-18 A | 2019-02-26 A | 4, 5 | 100% |  | 2019-02-18 | 2019-02-26 | 10.62d |  |  | start no earlier than 2019-02-18 | Anika Tahsin Raisa; Farahnaz Reza; Zakir Hossain | 179h | 179h | 32,220 | 38,186.67 | 32,220 |
| 8 | 1.2.5 | Idea Complete | milestone | 0d | 2019-02-26 A | 2019-02-26 A | 6, 7 | 100% |  | 2019-02-26 | 2019-02-26 | 0d |  |  | start no earlier than 2019-02-25 |  |  |  |  |  |  |
| 9 | 1.3 | **Scope** |  | 19.21d | 2019-02-26 A | 2019-03-14 |  | 36% | 12.29d | 2019-02-26 | 2019-03-14 | 19.21d | 228.92d |  |  |  | 426.67h | 136.5h | 76,800 | 44,580 | 24,570 |
| 10 | 1.3.1 | Determine Project Scope |  | 5.88d | 2019-02-26 A | 2019-03-04 A | 8 | 100% |  | 2019-02-26 | 2019-03-04 | 5.88d |  |  |  | Anika Tahsin Raisa | 47h | 47h | 8,460 | 8,460 | 8,460 |
| 11 | 1.3.2 | Draft Srs | manual | 7.46d | 2019-03-04 A | 2019-03-10 |  | 50% | 3.73d |  |  |  |  |  |  | Anika Tahsin Raisa; Farahnaz Reza; Zakir Hossain | 179h | 89.5h | 32,220 |  | 16,110 |
| 12 | 1.3.3 | Define Primilary Resources |  | 5.88d | 2019-03-04 | 2019-03-10 | 10 |  |  | 2019-03-04 | 2019-03-10 | 5.88d | 52.04d | 0d |  | Anika Tahsin Raisa; Farahnaz Reza; Zakir Hossain | 141h |  | 25,380 | 25,380 |  |
| 13 | 1.3.4 | Secure Resources |  | 7.46d | 2019-03-10 | 2019-03-14 | 12 |  |  | 2019-03-10 | 2019-03-14 | 7.46d | 227.5d |  |  | Farahnaz Reza | 59.67h |  | 10,740 | 10,740 |  |
| 14 | 1.3.5 | Scope Complete | milestone | 0d | 2019-03-10 | 2019-03-10 | 12 |  |  | 2019-03-10 | 2019-03-10 | 0d | 52.04d | 0d |  |  |  |  |  |  |  |
| 15 | 1.4 | **Hardware Requirement Analysis** |  | 36.83d | 2019-03-10 | 2019-04-16 |  |  |  | 2019-03-10 | 2019-04-15 | 35.25d | 46.17d |  |  |  | 128.33h |  | 19,308.33 | 51,808.33 |  |
| 16 | 1.4.1 | Conduct avaibillity |  | 2.71d | 2019-03-10 | 2019-03-11 | 14 |  |  | 2019-03-10 | 2019-03-11 | 2.71d | 46.17d | 0d |  | Farhan Sadeed | 21.67h |  | 108.33 | 6,175 |  |
| 17 | 1.4.2 | Review Specifications with Team |  | 4.29d | 2019-03-11 | 2019-03-14 | 16 |  |  | 2019-03-11 | 2019-03-14 | 4.29d | 46.17d | 0d |  |  |  |  |  | 6,180 |  |
| 18 | 1.4.3 | Develop Primary Budget |  | 10.62d | 2019-03-14 | 2019-04-01 | 17 |  |  | 2019-03-14 | 2019-04-01 | 10.62d | 47.08d | 0d |  | Farahnaz Reza | 85h |  | 15,300 | 15,300 |  |
| 19 | 1.4.4 | Incorporate Feedback |  | 4.29d | 2019-04-01 | 2019-04-03 | 18 |  |  | 2019-04-01 | 2019-04-03 | 4.29d | 58.62d | 0d |  |  |  |  |  |  |  |
| 20 | 1.4.5 | Obtain Approval |  | 2.71d | 2019-04-03 | 2019-04-07 | 19 |  |  | 2019-04-03 | 2019-04-07 | 2.71d | 58.62d | 0d |  | Farahnaz Reza | 21.67h |  | 3,900 | 3,900 |  |
| 21 | 1.4.6 | Secure Resources |  | 9.04d | 2019-04-07 | 2019-04-16 | 20 |  |  | 2019-04-07 | 2019-04-15 | 9.04d | 199.54d |  |  |  |  |  |  | 20,253.33 |  |
| 22 | 1.4.7 | Analysis Complete | milestone | 0d | 2019-04-07 | 2019-04-07 | 20 |  |  | 2019-04-07 | 2019-04-07 | 0d | 58.67d | 6.83d |  |  |  |  |  |  |  |
| 23 | 1.5 | **Software Requirement Analysis** |  | 22.67d | 2019-04-15 | 2019-05-07 |  |  |  | 2019-04-15 | 2019-05-07 | 22.67d | 50.67d |  |  |  | 323.33h |  | 58,200 | 59,820 |  |
| 24 | 1.5.1 | Conduct necessity study |  | 4.29d | 2019-04-15 | 2019-04-17 | 22 |  |  | 2019-04-15 | 2019-04-17 | 4.29d | 47.96d | 0d | start no earlier than 2019-04-15 | Anika Tahsin Raisa; Farahnaz Reza; Zakir Hossain | 103h |  | 18,540 | 18,540 |  |
| 25 | 1.5.2 | Draft preliminary software specifications |  | 7.46d | 2019-04-17 | 2019-04-24 | 24 |  |  | 2019-04-17 | 2019-04-24 | 7.46d | 47.96d | 0d |  | Anika Tahsin Raisa; Farahnaz Reza | 119.33h |  | 21,480 | 21,480 |  |
| 26 | 1.5.3 | Review Specifications with Team |  | 2.71d | 2019-04-24 | 2019-04-28 | 25 |  |  | 2019-04-24 | 2019-04-28 | 2.71d | 74d | 0d |  | Zakir Hossain | 21.67h |  | 3,900 | 3,900 |  |
| 27 | 1.5.4 | Develop Primary Budget |  | 1.12d | 2019-04-28 | 2019-04-28 | 26 |  |  | 2019-04-28 | 2019-04-28 | 1.12d | 74d | 0d |  | Farahnaz Reza | 9h |  | 1,620 | 1,620 |  |
| 28 | 1.5.5 | Incorporate Feedback |  | 1.12d | 2019-04-28 | 2019-04-29 | 27 |  |  | 2019-04-28 | 2019-04-29 | 1.12d | 74d | 0d |  |  |  |  |  |  |  |
| 29 | 1.5.6 | Determine Delivery TimelIne |  | 1.12d | 2019-04-29 | 2019-04-30 | 28 |  |  | 2019-04-29 | 2019-04-30 | 1.12d | 72.58d | 0d |  | Anika Tahsin Raisa; Farahnaz Reza; Zakir Hossain | 27h |  | 4,860 | 6,480 |  |
| 30 | 1.5.7 | Obtain Approval |  | 3.71d | 2019-04-30 | 2019-05-05 | 29 |  |  | 2019-04-30 | 2019-05-05 | 3.71d | 74d | 0d |  |  |  |  |  |  |  |
| 31 | 1.5.8 | Secure Resources |  | 2.71d | 2019-05-05 | 2019-05-07 | 30 |  |  | 2019-05-05 | 2019-05-07 | 2.71d | 179.08d |  |  | Anika Tahsin Raisa; Farahnaz Reza | 43.33h |  | 7,800 | 7,800 |  |
| 32 | 1.5.9 | Analysis Complete | milestone | 0d | 2019-05-05 | 2019-05-05 | 30 |  |  | 2019-05-05 | 2019-05-05 | 0d | 74d | 0d |  |  |  |  |  |  |  |

| ID | WBS | Task | Type | Duration | Start | Finish | Predecessors | Baseline start | Baseline finish | Baseline duration | Total slack | Free slack | Constraint | Resources | Work | Cost | Baseline cost |
| --- | --- | --- | --- | --- | --- | --- | --- | --- | --- | --- | --- | --- | --- | --- | --- | --- | --- |
| 33 | 1.6 | **Design** |  | 74.79d | 2019-05-05 | 2019-07-15 |  | 2019-05-05 | 2019-07-10 | 69.38d | 72.58d |  |  |  | 341.67h | 42,833.33 | 67,986.67 |
| 34 | 1.6.1 | Review Primary Software Specifications |  | 14.42d | 2019-05-05 | 2019-05-16 | 32 | 2019-05-05 | 2019-05-16 | 14.42d | 70.21d | 0d |  | Anika Tahsin Raisa; Farahnaz Reza; Zakir Hossain | 217h | 39,060 | 39,060 |
| 35 | 1.6.2 | Review Primary Hardware Specifications |  | 4.29d | 2019-05-16 | 2019-06-04 | 34 | 2019-05-16 | 2019-06-04 | 4.29d | 55.21d | 0d |  | Farhan Sadeed | 34.33h | 171.67 | 9,785 |
| 36 | 1.6.3 | Develop Functional Specifications |  | 1.12d | 2019-06-09 | 2019-06-09 | 35 | 2019-06-04 | 2019-06-05 | 1.12d | 55.21d | 24.21d |  |  |  |  | 1,620 |
| 37 | 1.6.4 | Review Functional Specifications |  | 1.12d | 2019-07-01 | 2019-07-01 | 36 | 2019-06-05 | 2019-06-05 | 1.12d | 31d | 0d |  | Farahnaz Reza; Zakir Hossain | 18h | 3,240 | 4,140 |
| 38 | 1.6.5 | Incorporate Feedback |  | 4.29d | 2019-07-01 | 2019-07-04 | 37 | 2019-06-09 | 2019-06-11 | 4.29d | 31d | 0d |  |  |  |  |  |
| 39 | 1.6.6 | Develop Prototype based on functional specifications |  | 9.04d | 2019-07-04 | 2019-07-14 | 38 | 2019-07-01 | 2019-07-08 | 9.04d | 31d | 0d |  | Farhan Sadeed | 72.33h | 361.67 | 13,381.67 |
| 40 | 1.6.7 | Obtain Approval |  | 2.71d | 2019-07-14 | 2019-07-15 | 39 | 2019-07-08 | 2019-07-10 | 2.71d | 107d |  |  |  |  |  |  |
| 41 | 1.6.8 | Design Complete | milestone | 0d | 2019-07-14 | 2019-07-14 | 39 | 2019-07-08 | 2019-07-08 | 0d | 31d | 0d |  |  |  |  |  |
| 42 | 1.7 | **Development** |  | 58.88d | 2019-07-14 | 2019-09-09 |  | 2019-07-08 | 2019-08-27 | 50.96d | 31d |  |  |  | 662.67h | 106,621.67 | 143,581.67 |
| 43 | 1.7.1 | Review Functional Specifications |  | 5.29d | 2019-07-14 | 2019-07-17 | 41 | 2019-07-08 | 2019-07-14 | 5.29d | 26.25d | 0d |  | Farahnaz Reza | 42.33h | 7,620 | 7,620 |
| 44 | 1.7.2 | Identify Design Parameters |  | 7.46d | 2019-07-17 | 2019-07-24 | 43 | 2019-07-14 | 2019-07-18 | 7.46d | 26.25d | 0d |  |  |  |  | 16,706.67 |
| 45 | 1.7.3 | Assign Development Staff |  | 2.71d | 2019-07-24 | 2019-07-25 | 44 | 2019-07-18 | 2019-07-22 | 2.71d | 26.25d | 0d |  | Farahnaz Reza | 21.67h | 3,900 | 3,900 |
| 46 | 1.7.4 | Develop Code |  | 27.42d | 2019-07-25 | 2019-08-26 | 45 | 2019-07-22 | 2019-08-21 | 22d | 21.5d | 0d |  | Anika Tahsin Raisa; Farahnaz Reza; Zakir Hossain | 407h | 73,260 | 73,260 |
| 47 | 1.7.5 | Developers Testing |  | 7.46d | 2019-08-26 | 2019-09-09 | 46 | 2019-08-21 | 2019-08-27 | 7.46d | 13.58d | 0d |  | Anika Tahsin Raisa; Farahnaz Reza | 119.33h | 21,480 | 21,480 |
| 48 | 1.7.6 | Hardware testing |  | 9.04d | 2019-08-19 | 2019-08-27 |  | 2019-08-19 | 2019-08-27 | 9.04d | 63.33d |  | finish no earlier than 2019-08-27 | Farhan Sadeed | 72.33h | 361.67 | 20,615 |
| 49 | 1.7.7 | Development Complete | milestone | 0d | 2019-09-09 | 2019-09-09 | 47 | 2019-08-27 | 2019-08-27 | 0d | 13.58d | 0d |  |  |  |  |  |
| 50 | 1.8 | **Testing** |  | 31.17d | 2019-09-09 | 2019-10-08 |  | 2019-08-27 | 2019-10-02 | 39.62d | 13.58d |  |  |  | 457.67h | 76,371.67 | 97,685 |
| 51 | 1.8.1 | Develop Unit test Based on Product Specifications |  | 5.29d | 2019-09-09 | 2019-09-12 | 49 | 2019-08-27 | 2019-09-09 | 5.29d | 13.58d | 0d |  | Anika Tahsin Raisa; Farahnaz Reza; Zakir Hossain | 127h | 22,860 | 22,860 |
| 52 | 1.8.2 | Develop Integral test Based on Product Specifications |  | 4.29d | 2019-09-12 | 2019-09-17 | 51 | 2019-09-09 | 2019-09-11 | 4.29d | 42.83d |  |  | Farhan Sadeed | 34.33h | 171.67 | 9,785 |
| 53 | 1.8.3 | **Unit Testing** |  | 19.88d | 2019-09-12 | 2019-10-01 |  | 2019-09-09 | 2019-09-25 | 18.29d | 15.17d |  |  |  | 162.67h | 29,280 | 37,080 |
| 54 | 1.8.3.1 | Review Modular Code |  | 4.29d | 2019-09-12 | 2019-09-17 | 51 | 2019-09-09 | 2019-09-11 | 4.29d | 15.17d | 0d |  | Farahnaz Reza | 34.33h | 6,180 | 6,180 |
| 55 | 1.8.3.2 | Test component modules to product specifications |  | 2.71d | 2019-09-17 | 2019-09-19 | 54 | 2019-09-11 | 2019-09-15 | 2.71d | 15.17d | 0d |  |  |  |  |  |
| 56 | 1.8.3.3 | Identify anomalies to product specifications |  | 1.12d | 2019-09-19 | 2019-09-19 | 55 | 2019-09-15 | 2019-09-16 | 1.12d | 15.17d | 0d |  | Zakir Hossain | 9h | 1,620 | 3,240 |
| 57 | 1.8.3.4 | Modify Code |  | 7.46d | 2019-09-19 | 2019-09-26 | 56 | 2019-09-16 | 2019-09-23 | 7.46d | 13.58d | 0d |  | Anika Tahsin Raisa; Farahnaz Reza | 119.33h | 21,480 | 21,480 |
| 58 | 1.8.3.5 | Re-Test Modified Code |  | 4.29d | 2019-09-26 | 2019-10-01 | 57 | 2019-09-23 | 2019-09-25 | 4.29d | 27.25d |  |  |  |  |  | 6,180 |
| 59 | 1.8.3.6 | Unit Testing Complete | milestone | 0d | 2019-09-26 | 2019-09-26 | 57 | 2019-09-23 | 2019-09-23 | 0d | 13.58d | 0d |  |  |  |  |  |

Notes:
- 47: Primary Debugging
- 48: Primary Debugging

| ID | WBS | Task | Type | Duration | Start | Finish | Predecessors | Baseline start | Baseline finish | Baseline duration | Total slack | Free slack | Constraint | Resources | Work | Cost | Baseline cost |
| --- | --- | --- | --- | --- | --- | --- | --- | --- | --- | --- | --- | --- | --- | --- | --- | --- | --- |
| 60 | 1.8.4 | **Integration Testing** |  | 11.88d | 2019-09-26 | 2019-10-08 |  | 2019-09-23 | 2019-10-02 | 12.42d | 13.58d |  |  |  | 133.67h | 24,060 | 27,960 |
| 61 | 1.8.4.1 | Test Module Integration |  | 2.71d | 2019-09-26 | 2019-09-30 | 59 | 2019-09-23 | 2019-09-24 | 2.71d | 13.58d | 0d |  |  |  |  |  |
| 62 | 1.8.4.2 | Identify anomalies to specifications |  | 2.71d | 2019-09-30 | 2019-10-01 | 61 | 2019-09-24 | 2019-09-26 | 2.71d | 13.58d | 0d |  | Anika Tahsin Raisa; Farahnaz Reza; Zakir Hossain | 65h | 11,700 | 11,700 |
| 63 | 1.8.4.3 | Modify Code |  | 2.71d | 2019-10-01 | 2019-10-03 | 62 | 2019-09-26 | 2019-09-30 | 2.71d | 13.58d | 0d |  |  |  |  | 3,900 |
| 64 | 1.8.4.4 | Re-Test Modified Code |  | 4.29d | 2019-10-03 | 2019-10-08 | 63 | 2019-09-30 | 2019-10-02 | 4.29d | 13.58d | 0d |  | Anika Tahsin Raisa; Farahnaz Reza | 68.67h | 12,360 | 12,360 |
| 65 | 1.8.4.5 | Integration Testing Complete | milestone | 0d | 2019-10-08 | 2019-10-08 | 64 | 2019-10-02 | 2019-10-02 | 0d | 16.12d | 0d |  |  |  |  |  |
| 66 | 1.9 | **Training** |  | 10.75d | 2019-10-02 | 2019-10-14 |  | 2019-10-02 | 2019-10-14 | 10.75d |  |  |  |  | 99.33h | 12,513.33 | 31,726.67 |
| 67 | 1.9.1 | Develop Training Specifications for End Users |  | 2.71d | 2019-10-09 | 2019-10-10 | 63, 65, 64 | 2019-10-02 | 2019-10-06 | 2.71d | 16.12d | 0d | finish no earlier than 2019-10-03 |  |  |  | 6,066.67 |
| 68 | 1.9.2 | Develop Training Specifications for Support Staff |  | 1.58d | 2019-10-10 | 2019-10-13 | 67 | 2019-10-06 | 2019-10-07 | 1.58d | 15.38d |  | finish no earlier than 2019-10-04 | Anika Tahsin Raisa; Farahnaz Reza | 25.33h | 4,560 | 4,560 |
| 69 | 1.9.3 | Identify training delivery methodology (computer based training, classroom, etc.) |  | 2.71d | 2019-10-02 | 2019-10-06 |  | 2019-10-02 | 2019-10-06 | 2.71d | 11.17d | 0d |  | Farhan Sadeed | 21.67h | 108.33 | 108.33 |
| 70 | 1.9.4 | Develop training materials |  | 4.29d | 2019-10-06 | 2019-10-09 | 69 | 2019-10-06 | 2019-10-09 | 4.29d | 10.58d | 0d |  | Farahnaz Reza | 34.33h | 6,180 | 12,360 |
| 71 | 1.9.5 | Conduct training usability study |  | 1.12d | 2019-10-09 | 2019-10-10 | 70 | 2019-10-09 | 2019-10-10 | 1.12d | 14.17d | 0d |  | Farhan Sadeed | 9h | 45 | 945 |
| 72 | 1.9.6 | Finalize training materials |  | 1.12d | 2019-10-10 | 2019-10-10 | 71 | 2019-10-10 | 2019-10-10 | 1.12d | 14.75d | 0d |  | Farahnaz Reza | 9h | 1,620 | 1,620 |
| 73 | 1.9.7 | Develop training delivery mechanism |  | 2.71d | 2019-10-10 | 2019-10-14 | 72 | 2019-10-10 | 2019-10-14 | 2.71d | 14.17d |  | finish no earlier than 2019-10-10 |  |  |  | 6,066.67 |
| 74 | 1.9.8 | Training complete | milestone | 0d | 2019-10-14 | 2019-10-14 | 69, 70, 71, 72 | 2019-10-14 | 2019-10-14 | 0d | 14.92d |  | start no earlier than 2019-10-14 |  |  |  |  |
| 75 | 1.10 | **Documentation** |  | 7.33d | 2019-10-14 | 2019-10-18 |  | 2019-10-14 | 2019-10-18 | 7.33d |  |  |  |  | 108h | 19,440 | 24,120 |
| 76 | 1.10.1 | Develop Srs specification |  | 2.42d | 2019-10-14 | 2019-10-15 |  | 2019-10-14 | 2019-10-15 | 2.42d | 10.67d | 0d | start no earlier than 2019-10-14 |  |  |  | 3,480 |
| 77 | 1.10.2 | Develop Help System |  | 2.42d | 2019-10-15 | 2019-10-17 | 76 | 2019-10-15 | 2019-10-17 | 2.42d | 10.08d |  | start no earlier than 2019-10-14 | Farahnaz Reza | 19.33h | 3,480 | 3,480 |
| 78 | 1.10.3 | Review Srs Documentation |  | 2.71d | 2019-10-14 | 2019-10-15 |  | 2019-10-14 | 2019-10-15 | 2.71d | 12.21d |  |  | Anika Tahsin Raisa; Zakir Hossain | 43.33h | 7,800 | 7,800 |
| 79 | 1.10.4 | Incorporate Feedback |  | 2.71d | 2019-10-14 | 2019-10-15 |  | 2019-10-14 | 2019-10-15 | 2.71d | 12.21d | 4.62d |  |  |  |  |  |
| 80 | 1.10.5 | Develop User Manual Specifications |  | 4d | 2019-10-15 | 2019-10-17 |  | 2019-10-15 | 2019-10-17 | 4d | 9.33d | 1.75d | finish no earlier than 2019-10-17 | Farahnaz Reza | 32h | 5,760 | 5,760 |
| 81 | 1.10.6 | Review All User Documentations |  | 0.83d | 2019-10-17 | 2019-10-17 | 76 | 2019-10-17 | 2019-10-17 | 0.83d | 8.21d | 0.75d | finish no earlier than 2019-10-17 | Anika Tahsin Raisa; Zakir Hossain | 13.33h | 2,400 | 3,600 |
| 82 | 1.10.7 | Incorporate Feedback |  | 1d | 2019-10-18 | 2019-10-18 | 81 | 2019-10-18 | 2019-10-18 | 1d | 7.58d | 0d | finish no earlier than 2019-10-18 |  |  |  |  |
| 83 | 1.10.8 | Documentation Complete | milestone | 0d | 2019-10-18 | 2019-10-18 | 79, 80, 81, 82 | 2019-10-18 | 2019-10-18 | 0d | 7.58d |  | start no earlier than 2019-10-18 |  |  |  |  |

| ID | WBS | Task | Type | Duration | Start | Finish | Predecessors | Baseline start | Baseline finish | Baseline duration | Total slack | Free slack | Constraint | Resources | Work | Cost | Baseline cost |
| --- | --- | --- | --- | --- | --- | --- | --- | --- | --- | --- | --- | --- | --- | --- | --- | --- | --- |
| 84 | 1.11 | **Deployment** |  | 9.33d | 2019-10-17 | 2019-10-23 |  | 2019-10-17 | 2019-10-23 | 9.33d |  |  |  |  | 95.33h | 12,610 | 19,890 |
| 85 | 1.11.1 | Determine final deployment strategy |  | 0.83d | 2019-10-17 | 2019-10-17 |  | 2019-10-17 | 2019-10-17 | 0.83d | 8.5d | 3.88d | finish no earlier than 2019-10-17 | Farahnaz Reza | 6.67h | 1,200 | 1,200 |
| 86 | 1.11.2 | Develop deployment methodology |  | 2.42d | 2019-10-17 | 2019-10-20 |  | 2019-10-17 | 2019-10-20 | 2.42d | 4.92d | 0.29d | start no earlier than 2019-10-17 | Farhan Sadeed | 19.33h | 96.67 | 5,510 |
| 87 | 1.11.3 | Secure deployment resources |  | 2.71d | 2019-10-17 | 2019-10-20 |  | 2019-10-17 | 2019-10-20 | 2.71d | 4.62d | 0d |  | Farahnaz Reza; Zakir Hossain | 43.33h | 7,800 | 7,800 |
| 88 | 1.11.4 | Train Support Staff |  | 0.83d | 2019-10-20 | 2019-10-21 | 85, 86, 87 | 2019-10-20 | 2019-10-21 | 0.83d | 4.62d |  | finish no earlier than 2019-10-20 | Farhan Sadeed | 6.67h | 33.33 | 1,900 |
| 89 | 1.11.5 | Deploy Product |  | 2.42d | 2019-10-20 | 2019-10-21 |  | 2019-10-20 | 2019-10-21 | 2.42d | 0.08d | 0d | finish no earlier than 2019-10-21 | Farahnaz Reza | 19.33h | 3,480 | 3,480 |
| 90 | 1.11.6 | Deployment Complete |  | 2.42d | 2019-10-21 | 2019-10-23 | 89 | 2019-10-21 | 2019-10-23 | 2.42d | 0.08d | 0d | finish no earlier than 2019-10-21 |  |  |  |  |
| 91 | 1.12 | **Post Implementation Review** |  | 3.5d | 2019-10-21 | 2019-10-24 |  | 2019-10-21 | 2019-10-24 | 3.5d | 0.08d |  |  |  | 44h | 4,945 | 9,705 |
| 92 | 1.12.1 | Review With Team Members |  | 1.12d | 2019-10-23 | 2019-10-23 | 90 | 2019-10-23 | 2019-10-23 | 1.12d | 0d |  |  | Farahnaz Reza | 9h | 1,620 | 1,620 |
| 93 | 1.12.2 | Document Lesson Learnt |  | 1.12d | 2019-10-23 | 2019-10-24 | 92 | 2019-10-23 | 2019-10-24 | 1.12d | 0d |  |  | Anika Tahsin Raisa; Farhan Sadeed; Zakir Hossain | 27h | 3,285 | 5,805 |
| 94 | 1.12.3 | Create Maintenance Team |  | 1d | 2019-10-21 | 2019-10-22 |  | 2019-10-21 | 2019-10-22 | 1d | 0.75d | 0d | finish no earlier than 2019-10-22 | Farhan Sadeed | 8h | 40 | 2,280 |
| 95 | 1.12.4 | Post Implementation Review Complete | milestone | 0d | 2019-10-22 | 2019-10-22 | 94 | 2019-10-22 | 2019-10-22 | 0d | 0.75d |  |  |  |  |  |  |
| 96 | 1.13 | Water Supply Management Complete |  | 2.42d | 2019-10-23 | 2019-10-24 | 95 | 2019-10-23 | 2019-10-24 | 2.42d | 0d |  | finish no earlier than 2019-10-24 | Anika Tahsin Raisa; Farahnaz Reza; Farhan Sadeed; Zakir Hossain | 77.33h | 10,536.67 | 15,950 |
