# Software Development

Schedule from MS Project, 2020-09-03 to 2021-01-14.

## Calendars

- Standard: Mon-Fri 08:00-12:00, 13:00-17:00; Sat-Sun off.

## Resources

| Resource |
| --- |
| Management |
| Project Manager |
| Analyst |
| Developer |
| Testers |
| Trainers |
| Technical Communicators |
| Deployment Team |

## Schedule

| ID | WBS | Task | Type | Duration | Start | Finish | Predecessors | Total slack | Resources | Work |
| --- | --- | --- | --- | --- | --- | --- | --- | --- | --- | --- |
| 1 | 1 | **Scope** |  | 3.5d | 2020-09-03 | 2020-09-08 |  | 0d |  | 28h |
| 2 | 1.1 | Determine project scope |  | 4h | 2020-09-03 | 2020-09-03 |  | 0d | Management | 4h |
| 3 | 1.2 | Secure project sponsorship |  | 1d | 2020-09-03 | 2020-09-04 | 2 | 0d | Management | 8h |
| 4 | 1.3 | Define preliminary resources |  | 1d | 2020-09-04 | 2020-09-07 | 3 | 0d | Project Manager | 8h |
| 5 | 1.4 | Secure core resources |  | 1d | 2020-09-07 | 2020-09-08 | 4 | 0d | Project Manager | 8h |
| 6 | 1.5 | Scope complete | milestone | 0d | 2020-09-08 | 2020-09-08 | 5 | 0d |  |  |
| 7 | 2 | **Analysis/Software Requirements** |  | 14d | 2020-09-08 | 2020-09-28 |  | 0d |  | 120h |
| 8 | 2.1 | Conduct needs analysis |  | 5d | 2020-09-08 | 2020-09-15 | 6 | 0d | Analyst | 40h |
| 9 | 2.2 | Draft preliminary software specifications |  | 3d | 2020-09-15 | 2020-09-18 | 8 | 0d | Analyst | 24h |
| 10 | 2.3 | Develop preliminary budget |  | 2d | 2020-09-18 | 2020-09-22 | 9 | 0d | Project Manager | 16h |
| 11 | 2.4 | Review software specifications/budget with team |  | 4h | 2020-09-22 | 2020-09-22 | 10 | 0d | Project Manager; Analyst | 8h |
| 12 | 2.5 | Incorporate feedback on software specifications |  | 1d | 2020-09-23 | 2020-09-23 | 11 | 0d | Analyst | 8h |
| 13 | 2.6 | Develop delivery timeline |  | 1d | 2020-09-24 | 2020-09-24 | 12 | 0d | Project Manager | 8h |
| 14 | 2.7 | Obtain approvals to proceed (concept, timeline, budget) |  | 4h | 2020-09-25 | 2020-09-25 | 13 | 0d | Management; Project Manager | 8h |
| 15 | 2.8 | Secure required resources |  | 1d | 2020-09-25 | 2020-09-28 | 14 | 0d | Project Manager | 8h |
| 16 | 2.9 | Analysis complete | milestone | 0d | 2020-09-28 | 2020-09-28 | 15 | 0d |  |  |
| 17 | 3 | **Design** |  | 14.5d | 2020-09-28 | 2020-10-16 |  | 0d |  | 120h |
| 18 | 3.1 | Review preliminary software specifications |  | 2d | 2020-09-28 | 2020-09-30 | 16 | 0d | Analyst | 16h |
| 19 | 3.2 | Develop functional specifications |  | 5d | 2020-09-30 | 2020-10-07 | 18 | 0d | Analyst | 40h |
| 20 | 3.3 | Develop prototype based on functional specifications |  | 4d | 2020-10-07 | 2020-10-13 | 19 | 0d | Analyst | 32h |
| 21 | 3.4 | Review functional specifications |  | 2d | 2020-10-13 | 2020-10-15 | 20 | 0d | Management | 16h |
| 22 | 3.5 | Incorporate feedback into functional specifications |  | 1d | 2020-10-15 | 2020-10-16 | 21 | 0d | Management | 8h |
| 23 | 3.6 | Obtain approval to proceed |  | 4h | 2020-10-16 | 2020-10-16 | 22 | 0d | Management; Project Manager | 8h |
| 24 | 3.7 | Design complete | milestone | 0d | 2020-10-16 | 2020-10-16 | 23 | 0d |  |  |

| ID | WBS | Task | Type | Duration | Start | Finish | Predecessors | Total slack | Free slack | Resources | Work |
| --- | --- | --- | --- | --- | --- | --- | --- | --- | --- | --- | --- |
| 25 | 4 | **Development** |  | 21.75d | 2020-10-19 | 2020-11-17 |  | 0d |  |  | 264h |
| 26 | 4.1 | Review functional specifications |  | 1d | 2020-10-19 | 2020-10-19 | 24 | 0d |  | Developer | 8h |
| 27 | 4.2 | Identify modular/tiered design parameters |  | 1d | 2020-10-20 | 2020-10-20 | 26 | 0d |  | Developer | 8h |
| 28 | 4.3 | Assign development staff |  | 1d | 2020-10-21 | 2020-10-21 | 27 | 0d |  | Developer | 8h |
| 29 | 4.4 | Develop code |  | 15d | 2020-10-22 | 2020-11-11 | 28 | 0d |  | Developer | 120h |
| 30 | 4.5 | Developer testing (primary debugging) |  | 15d | 2020-10-27 | 2020-11-17 | 29FS-7.5% | 0d |  | Developer | 120h |
| 31 | 4.6 | Development complete | milestone | 0d | 2020-11-17 | 2020-11-17 | 30 | 0d |  |  |  |
| 32 | 5 | **Testing** |  | 48.75d | 2020-10-19 | 2020-12-24 |  | 15d |  |  | 280h |
| 33 | 5.1 | Develop unit test plans using product specifications |  | 4d | 2020-10-19 | 2020-10-22 | 24 | 17.75d |  | Testers | 32h |
| 34 | 5.2 | Develop integration test plans using product specifications |  | 4d | 2020-10-19 | 2020-10-22 | 24 | 59.75d |  | Testers | 32h |
| 35 | 5.3 | **Unit Testing** |  | 15d | 2020-11-17 | 2020-12-08 |  | 0d |  |  | 120h |
| 36 | 5.3.1 | Review modular code |  | 5d | 2020-11-17 | 2020-11-24 | 33, 31 | 0d |  | Testers | 40h |
| 37 | 5.3.2 | Test component modules to product specifications |  | 2d | 2020-11-24 | 2020-11-26 | 31, 36 | 0d |  | Testers | 16h |
| 38 | 5.3.3 | Identify anomalies to product specifications |  | 3d | 2020-11-26 | 2020-12-01 | 37 | 0d |  | Testers | 24h |
| 39 | 5.3.4 | Modify code |  | 3d | 2020-12-01 | 2020-12-04 | 38 | 0d |  | Testers | 24h |
| 40 | 5.3.5 | Re-test modified code |  | 2d | 2020-12-04 | 2020-12-08 | 39 | 0d |  | Testers | 16h |
| 41 | 5.3.6 | Unit testing complete | milestone | 0d | 2020-12-08 | 2020-12-08 | 40 | 0d |  |  |  |
| 42 | 5.4 | **Integration Testing** |  | 12d | 2020-12-08 | 2020-12-24 |  | 0d |  |  | 96h |
| 43 | 5.4.1 | Test module integration |  | 5d | 2020-12-08 | 2020-12-15 | 41 | 0d |  | Testers | 40h |
| 44 | 5.4.2 | Identify anomalies to specifications |  | 2d | 2020-12-15 | 2020-12-17 | 43 | 0d |  | Testers | 16h |
| 45 | 5.4.3 | Modify code |  | 3d | 2020-12-17 | 2020-12-22 | 44 | 0d |  | Testers | 24h |
| 46 | 5.4.4 | Re-test modified code |  | 2d | 2020-12-22 | 2020-12-24 | 45 | 0d |  | Testers | 16h |
| 47 | 5.4.5 | Integration testing complete | milestone | 0d | 2020-12-24 | 2020-12-24 | 46 | 0d |  |  |  |
| 48 | 6 | **Training** |  | 45.75d | 2020-10-19 | 2020-12-21 |  | 3d |  |  | 256h |
| 49 | 6.1 | Develop training specifications for end users |  | 3d | 2020-10-19 | 2020-10-21 | 24 | 21.75d | 18.75d | Trainers | 24h |
| 50 | 6.2 | Develop training specifications for helpdesk support staff |  | 3d | 2020-10-19 | 2020-10-21 | 24 | 21.75d | 18.75d | Trainers | 24h |
| 51 | 6.3 | Identify training delivery methodology (computer based training, classroom, etc.) |  | 2d | 2020-10-19 | 2020-10-20 | 24 | 22.75d | 19.75d | Trainers | 16h |
| 52 | 6.4 | Develop training materials |  | 3w | 2020-11-17 | 2020-12-08 | 49, 31, 50, 51 | 3d | 0d | Trainers | 120h |
| 53 | 6.5 | Conduct training usability study |  | 4d | 2020-12-08 | 2020-12-14 | 52 | 3d | 0d | Trainers | 32h |
| 54 | 6.6 | Finalize training materials |  | 3d | 2020-12-14 | 2020-12-17 | 53 | 3d | 0d | Trainers | 24h |
| 55 | 6.7 | Develop training delivery mechanism |  | 2d | 2020-12-17 | 2020-12-21 | 54 | 3d | 0d | Trainers | 16h |
| 56 | 6.8 | Training materials complete | milestone | 0d | 2020-12-21 | 2020-12-21 | 55 | 3d |  |  |  |

| ID | WBS | Task | Type | Duration | Start | Finish | Predecessors | Total slack | Free slack | Resources | Work |
| --- | --- | --- | --- | --- | --- | --- | --- | --- | --- | --- | --- |
| 57 | 7 | **Documentation** |  | 30.5d | 2020-10-19 | 2020-11-30 |  | 18.25d |  |  | 336h |
| 58 | 7.1 | Develop Help specification |  | 1d | 2020-10-19 | 2020-10-19 | 24 | 27.75d | 9.5d | Technical Communicators | 8h |
| 59 | 7.2 | Develop Help system |  | 3w | 2020-11-02 | 2020-11-23 | 58, 29FS-5% | 18.25d | 0d | Technical Communicators | 120h |
| 60 | 7.3 | Review Help documentation |  | 3d | 2020-11-23 | 2020-11-26 | 59 | 18.25d | 0d | Technical Communicators | 24h |
| 61 | 7.4 | Incorporate Help documentation feedback |  | 2d | 2020-11-26 | 2020-11-30 | 60 | 18.25d | 0d | Technical Communicators | 16h |
| 62 | 7.5 | Develop user manuals specifications |  | 2d | 2020-10-19 | 2020-10-20 | 24 | 27.75d | 8.5d | Technical Communicators | 16h |
| 63 | 7.6 | Develop user manuals |  | 3w | 2020-11-02 | 2020-11-23 | 62, 29FS-5% | 19.25d | 0d | Technical Communicators | 120h |
| 64 | 7.7 | Review all user documentation |  | 2d | 2020-11-23 | 2020-11-25 | 63 | 19.25d | 0d | Technical Communicators | 16h |
| 65 | 7.8 | Incorporate user documentation feedback |  | 2d | 2020-11-25 | 2020-11-27 | 64 | 19.25d | 1d | Technical Communicators | 16h |
| 66 | 7.9 | Documentation complete | milestone | 0d | 2020-11-30 | 2020-11-30 | 65, 61 | 18.25d |  |  |  |
| 67 | 8 | **Pilot** |  | 70.25d | 2020-09-28 | 2021-01-04 |  | 0d |  |  | 64h |
| 68 | 8.1 | Identify test group |  | 1d | 2020-09-28 | 2020-09-29 | 16 | 61.25d | 0d | Project Manager | 8h |
| 69 | 8.2 | Develop software delivery mechanism |  | 1d | 2020-09-29 | 2020-09-30 | 68 | 61.25d |  |  |  |
| 70 | 8.3 | Install/deploy software |  | 1d | 2020-12-24 | 2020-12-25 | 47, 69, 66, 56 | 0d |  | Deployment Team | 8h |
| 71 | 8.4 | Obtain user feedback |  | 1w | 2020-12-25 | 2021-01-01 | 70 | 0d |  | Deployment Team | 40h |
| 72 | 8.5 | Evaluate testing information |  | 1d | 2021-01-01 | 2021-01-04 | 71 | 0d |  | Deployment Team | 8h |
| 73 | 8.6 | Pilot complete | milestone | 0d | 2021-01-04 | 2021-01-04 | 72 | 0d |  |  |  |
| 74 | 9 | **Deployment** |  | 5d | 2021-01-04 | 2021-01-11 |  | 0d |  |  | 40h |
| 75 | 9.1 | Determine final deployment strategy |  | 1d | 2021-01-04 | 2021-01-05 | 73 | 0d |  | Deployment Team | 8h |
| 76 | 9.2 | Develop deployment methodology |  | 1d | 2021-01-05 | 2021-01-06 | 75 | 0d |  | Deployment Team | 8h |
| 77 | 9.3 | Secure deployment resources |  | 1d | 2021-01-06 | 2021-01-07 | 76 | 0d |  | Deployment Team | 8h |
| 78 | 9.4 | Train support staff |  | 1d | 2021-01-07 | 2021-01-08 | 77 | 0d |  | Deployment Team | 8h |
| 79 | 9.5 | Deploy software |  | 1d | 2021-01-08 | 2021-01-11 | 78 | 0d |  | Deployment Team | 8h |
| 80 | 9.6 | Deployment complete | milestone | 0d | 2021-01-11 | 2021-01-11 | 79 | 0d |  |  |  |

| ID | WBS | Task | Type | Duration | Start | Finish | Predecessors | Total slack | Resources | Work |
| --- | --- | --- | --- | --- | --- | --- | --- | --- | --- | --- |
| 81 | 10 | **Post Implementation Review** |  | 3d | 2021-01-11 | 2021-01-14 |  | 0d |  | 24h |
| 82 | 10.1 | Document lessons learned |  | 1d | 2021-01-11 | 2021-01-12 | 80 | 0d | Project Manager | 8h |
| 83 | 10.2 | Distribute to team members |  | 1d | 2021-01-12 | 2021-01-13 | 82 | 0d | Project Manager | 8h |
| 84 | 10.3 | Create software maintenance team |  | 1d | 2021-01-13 | 2021-01-14 | 83 | 0d | Project Manager | 8h |
| 85 | 10.4 | Post implementation review complete | milestone | 0d | 2021-01-14 | 2021-01-14 | 84 | 0d |  |  |
| 86 | 11 | Software development template complete | milestone | 0d | 2021-01-14 | 2021-01-14 | 85 | 0d |  |  |
