# project scheduling1

Schedule from MS Project, 2020-08-13 to 2021-05-28, 6 hours a day, A marks actual dates.

## Calendars

- Standard: Mon-Fri 08:00-12:00, 13:00-17:00; Sat-Sun off.

## Resources

| Resource |
| --- |
| Capt Ishrak |
| Lt Safkat |
| Lt Nahian |
| Lt Labiba |
| Lt Lopa |
| PC |
| Raspberry Pi 4 |
| Arduino Uno |
| ESP8266-V1 |
| ESP8266-V3 |

## Schedule

| ID | WBS | Task | Type | Duration | Start | Finish | Predecessors | Complete | Remaining | Total slack |
| --- | --- | --- | --- | --- | --- | --- | --- | --- | --- | --- |
| 1 | 1 | **Vehicle Logbook Management System** |  | 275.67d | 2020-08-13 A | 2021-05-28 |  | 75% | 69.69d | 0d |
| 2 | 1.1 | **Initialization** |  | 16d | 2020-08-13 A | 2020-08-28 A |  | 100% |  |  |
| 3 | 1.1.1 | Project Planning |  | 2d | 2020-08-13 A | 2020-08-14 A |  | 100% |  |  |
| 4 | 1.1.2 | Project Proposal |  | 14d | 2020-08-14 A | 2020-08-28 A | 3 | 100% |  |  |
| 5 | 1.1.3 | Project Approval | milestone | 0d | 2020-08-28 A | 2020-08-28 A | 4 | 100% |  |  |
| 6 | 1.2 | **Plan** |  | 71d | 2020-08-31 A | 2020-11-12 A |  | 100% |  |  |
| 7 | 1.2.1 | **Macro Planning** |  | 14d | 2020-08-31 A | 2020-09-14 A |  | 100% |  |  |
| 8 | 1.2.1.1 | Project Scheduling |  | 7d | 2020-08-31 A | 2020-09-07 A | 5 | 100% |  |  |
| 9 | 1.2.1.2 | Project Work Distribution |  | 7d | 2020-09-07 A | 2020-09-14 A | 8 | 100% |  |  |
| 10 | 1.2.2 | **Micro Planning** |  | 57d | 2020-09-14 A | 2020-11-12 A |  | 100% |  |  |
| 11 | 1.2.2.1 | SRS |  | 42d | 2020-09-14 A | 2020-10-27 A | 9 | 100% |  |  |
| 12 | 1.2.2.2 | UI Concept |  | 14d | 2020-10-28 A | 2020-11-11 A | 11 | 100% |  |  |
| 13 | 1.2.2.3 | Final Presentation on Planning |  | 1d | 2020-11-11 A | 2020-11-12 A | 12 | 100% |  |  |
| 14 | 1.3 | Term Break |  | 115.67d | 2020-11-12 A | 2021-03-12 A | 13 | 100% |  |  |
| 15 | 1.4 | **Execution** |  | 68d | 2021-03-15 A | 2021-05-24 |  | 21% | 53.48d | 5d |
| 16 | 1.4.1 | Concept |  | 3d | 2021-03-15 A | 2021-03-17 A | 14 | 100% |  |  |
| 17 | 1.4.2 | Collecting Meterial |  | 4d | 2021-03-17 A | 2021-03-22 A | 16 | 100% |  |  |
| 18 | 1.4.3 | **Designing** |  | 5d | 2021-03-22 A | 2021-03-25 A |  | 100% |  |  |
| 19 | 1.4.3.1 | **Software Design** |  | 3d | 2021-03-22 A | 2021-03-24 A |  | 100% |  |  |
| 20 | 1.4.3.1.1 | UI Design |  | 1d | 2021-03-22 A | 2021-03-22 A | 17 | 100% |  |  |
| 21 | 1.4.3.1.2 | Database Design |  | 1d | 2021-03-23 A | 2021-03-23 A | 20 | 100% |  |  |
| 22 | 1.4.3.1.3 | Feedback Mechanism Design |  | 1d | 2021-03-23 A | 2021-03-24 A | 21 | 100% |  |  |
| 23 | 1.4.3.2 | **Hardware Design** |  | 2d | 2021-03-24 A | 2021-03-25 A |  | 100% |  |  |
| 24 | 1.4.3.2.1 | Scanner Implementation |  | 1d | 2021-03-24 A | 2021-03-25 A | 22 | 100% |  |  |
| 25 | 1.4.3.2.2 | Barcode Generation |  | 1d | 2021-03-25 A | 2021-03-25 A | 24 | 100% |  |  |

| ID | WBS | Task | Duration | Start | Finish | Predecessors | Complete | Remaining | Total slack |
| --- | --- | --- | --- | --- | --- | --- | --- | --- | --- |
| 26 | 1.4.4 | **Development** | 49d | 2021-03-26 A | 2021-05-17 |  | 11% | 43.56d | 12d |
| 27 | 1.4.4.1 | Create Functional UI Navigation | 7d | 2021-03-26 A | 2021-04-02 A | 25 | 100% |  |  |
| 28 | 1.4.4.2 | Create UI for QM | 7d | 2021-04-02 | 2021-04-09 | 27 |  |  | 0d |
| 29 | 1.4.4.3 | Create UI for Workshop Officer | 7d | 2021-04-09 | 2021-04-16 | 28 |  |  | 0d |
| 30 | 1.4.4.4 | Create UI for RI&I | 7d | 2021-04-16 | 2021-04-23 | 29 |  |  | 0d |
| 31 | 1.4.4.5 | Implement Database With All UI | 14d | 2021-04-26 | 2021-05-10 | 30 |  |  | 19d |
| 32 | 1.4.4.6 | Workable Camera Connection With Computer | 7d | 2021-04-26 | 2021-05-03 | 30 |  |  | 0d |
| 33 | 1.4.4.7 | barcode generation | 7d | 2021-05-03 | 2021-05-10 | 32 |  |  | 0d |
| 34 | 1.4.4.8 | Implement Feedback Method for RI&I And QM | 7d | 2021-05-10 | 2021-05-17 | 33 |  |  | 0d |
| 35 | 1.4.5 | **Tests** | 7d | 2021-05-17 | 2021-05-24 |  |  |  | 0d |
| 36 | 1.4.5.1 | Analysis | 7d | 2021-05-17 | 2021-05-24 | 34 |  |  | 5d |
| 37 | 1.4.5.2 | Improvements | 7d | 2021-05-17 | 2021-05-24 | 34 |  |  | 0d |
| 38 | 1.5 | Final Check And Preparation for Delivary | 3d | 2021-05-25 | 2021-05-27 | 37 |  |  | 0d |
| 39 | 1.6 | Delivary | 1d | 2021-05-27 | 2021-05-27 | 38 |  |  | 0d |
| 40 | 1.7 | **Closing** | 1d | 2021-05-28 | 2021-05-28 |  |  |  | 0d |
| 41 | 1.7.1 | Closing Meeting | 1d | 2021-05-28 | 2021-05-28 | 39 |  |  | 0d |
